# TUBULAR

Schedule from GanttProject, 2018-01-08 to 2019-01-18.
Alternative to AirCore for Atmospheric Greenhouse Gas Sampling

## Calendars

- Project calendar: Mon-Sun working.

## Schedule

| ID | WBS | Task | Type | Duration | Start | Finish |
| --- | --- | --- | --- | --- | --- | --- |
| 1 | 1 | **Stages** |  | 357d | 2018-01-08 | 2018-12-30 |
| 2 | 1.1 | Preliminary Design |  | 35d | 2018-01-08 | 2018-02-11 |
| 3 | 1.2 | Critical Design |  | 112d | 2018-02-12 | 2018-06-03 |
| 4 | 1.3 | Experiment Building and Testing |  | 105d | 2018-06-06 | 2018-09-18 |
| 5 | 1.4 | Integration Progress Reviews |  | 2d | 2018-07-23 | 2018-07-24 |
| 6 | 1.5 | Final Experiment Preparations |  | 25d | 2018-09-17 | 2018-10-11 |
| 7 | 1.6 | Launch Campaign |  | 11d | 2018-10-12 | 2018-10-22 |
| 8 | 1.7 | Data Analysis and Reporting |  | 69d | 2018-10-23 | 2018-12-30 |
| 9 | 2 | **Student Experiment Documentation** |  | 367d | 2018-01-15 | 2019-01-16 |
| 10 | 2.1 | SEDv1-0 | milestone | 0d | 2018-01-15 | 2018-01-15 |
| 11 | 2.2 | SEDv1-2 | milestone | 0d | 2018-03-12 | 2018-03-12 |
| 12 | 2.3 | SEDv2-0 | milestone | 0d | 2018-05-14 | 2018-05-14 |
| 13 | 2.4 | SEDv3-0 | milestone | 0d | 2018-07-16 | 2018-07-16 |
| 14 | 2.5 | SEDv4-0 | milestone | 0d | 2018-09-17 | 2018-09-17 |
| 15 | 2.6 | SEDv5-0 |  | 66d | 2018-11-12 | 2019-01-16 |
| 16 | 3 | **Reviews** |  | 243d | 2018-02-05 | 2018-10-05 |
| 17 | 3.1 | Preliminary Design Review (PDR) |  | 5d | 2018-02-05 | 2018-02-09 |
| 18 | 3.2 | Critical Design Review (CDR) |  | 5d | 2018-05-28 | 2018-06-01 |
| 19 | 3.3 | Integration Progress Review (IPR) |  | 2d | 2018-07-23 | 2018-07-24 |
| 20 | 3.4 | Experiment Acceptance Review (EAR) |  | 5d | 2018-10-01 | 2018-10-05 |
| 21 | 4 | **Electrical Division** |  | 142d | 2018-01-25 | 2018-06-15 |
| 22 | 4.1 | Select pump |  | 2d | 2018-02-22 | 2018-02-23 |
| 23 | 4.2 | Find pump on Swedish vendor site | milestone | 0d | 2018-02-26 | 2018-02-26 |
| 24 | 4.3 | Order pump |  | 30d | 2018-02-26 | 2018-03-27 |
| 25 | 4.4 | Select valves, switching cuircit, ad interfaces |  | 5d | 2018-02-22 | 2018-02-26 |
| 26 | 4.5 | Find valves on Swedish vendor site | milestone | 0d | 2018-03-01 | 2018-03-01 |
| 27 | 4.6 | Order valves |  | 31d | 2018-03-02 | 2018-04-01 |
| 28 | 4.7 | Find all electrical sensors |  | 3d | 2018-03-05 | 2018-03-07 |
| 29 | 4.8 | Order sensors |  | 30d | 2018-02-08 | 2018-03-09 |
| 30 | 4.9 | Update initial/preliminary circtuit diagram |  | 2d | 2018-01-25 | 2018-01-26 |
| 31 | 4.10 | Define sensors |  | 2d | 2018-01-25 | 2018-01-26 |
| 32 | 4.11 | Create circuit diagram |  | 5d | 2018-02-27 | 2018-03-03 |
| 33 | 4.12 | Identify extra components |  | 2d | 2018-03-05 | 2018-03-06 |
| 34 | 4.13 | Define interfaces between EB, valve center, and CAC |  | 5d | 2018-02-28 | 2018-03-04 |
| 35 | 4.14 | Find extra components |  | 2d | 2018-03-07 | 2018-03-08 |
| 36 | 4.15 | Order extra components |  | 20d | 2018-03-20 | 2018-04-08 |
| 37 | 4.16 | Decide on number of PCBs |  | 9d | 2018-03-20 | 2018-03-28 |
| 38 | 4.17 | Design PCB |  | 10d | 2018-03-20 | 2018-03-29 |
| 39 | 4.18 | Power distribution circuit diagram |  | 5d | 2018-03-22 | 2018-03-26 |
| 40 | 4.19 | Figure out grounding |  | 10d | 2018-03-20 | 2018-03-29 |
| 41 | 4.20 | Confirm heating requirements, heater placement, number, size |  | 6d | 2018-03-12 | 2018-03-17 |
| 42 | 4.21 | Print PCB |  | 10d | 2018-05-15 | 2018-05-24 |
| 43 | 4.22 | Soldering PCB |  | 1d | 2018-06-01 | 2018-06-01 |
| 44 | 4.23 | Integration with Software |  | 15d | 2018-06-01 | 2018-06-15 |

| ID | WBS | Task | Type | Duration | Start | Finish |
| --- | --- | --- | --- | --- | --- | --- |
| 45 | 5 | **Software Division** |  | 205d | 2018-02-22 | 2018-09-14 |
| 46 | 5.1 | Acquire Arduino Due and ethernet shield |  | 15d | 2018-02-22 | 2018-03-08 |
| 47 | 5.2 | Design & record telecomand & telemetry package |  | 1d | 2018-02-27 | 2018-02-27 |
| 48 | 5.3 | Sequence diagram for telecommand | milestone | 0d | 2018-03-12 | 2018-03-12 |
| 49 | 5.4 | Sequence diagram for telemetry | milestone | 0d | 2018-03-12 | 2018-03-12 |
| 50 | 5.5 | Listing header file for sensors etc | milestone | 0d | 2018-02-26 | 2018-02-26 |
| 51 | 5.6 | Code sensors reading object |  | 2d | 2018-02-27 | 2018-02-28 |
| 52 | 5.7 | Code air sampling object |  | 5d | 2018-03-26 | 2018-03-30 |
| 53 | 5.8 | Code heating object |  | 13d | 2018-03-19 | 2018-03-31 |
| 54 | 5.9 | Apply watchdog and test it | milestone | 0d | 2018-04-01 | 2018-04-01 |
| 55 | 5.10 | Code rx/TX object |  | 14d | 2018-03-26 | 2018-04-08 |
| 56 | 5.11 | Make interface document (Pins) | milestone | 0d | 2018-04-29 | 2018-04-29 |
| 57 | 5.12 | Write ground section and code |  | 23d | 2018-04-01 | 2018-04-23 |
| 58 | 5.13 | Write GS manual |  | 8d | 2018-04-23 | 2018-04-30 |
| 59 | 5.14 | Integration with Electrical |  | 15d | 2018-06-01 | 2018-06-15 |
| 60 | 5.15 | Software freeze date | milestone | 0d | 2018-09-15 | 2018-09-15 |
| 61 | 6 | **Mechanical Division** |  | 154d | 2018-02-26 | 2018-07-29 |
| 62 | 6.1 | Design the new configuration |  | 11d | 2018-02-26 | 2018-03-08 |
| 63 | 6.2 | Decide on locations of external connections |  | 11d | 2018-02-26 | 2018-03-08 |
| 64 | 6.3 | Agree on new designs with programme organizers |  | 11d | 2018-02-26 | 2018-03-08 |
| 65 | 6.4 | Design pipes |  | 5d | 2018-02-26 | 2018-03-02 |
| 66 | 6.5 | Find valves |  | 5d | 2018-02-26 | 2018-03-02 |
| 67 | 6.6 | Order valves |  | 15d | 2018-03-05 | 2018-03-19 |
| 68 | 6.7 | Label all figures in SED | milestone | 0d | 2018-02-26 | 2018-02-26 |
| 69 | 6.8 | Acquire styrofoam walls (payload protection) |  | 11d | 2018-05-11 | 2018-05-21 |
| 70 | 6.9 | Acquire aluminium sheet for the walls |  | 11d | 2018-05-11 | 2018-05-21 |
| 71 | 6.10 | Acquire polyethylene foam (thermal insulation) |  | 11d | 2018-05-11 | 2018-05-21 |
| 72 | 6.11 | Acquire experiment building components (e.g. screws) |  | 11d | 2018-05-11 | 2018-05-21 |
| 73 | 6.12 | Acquire frame bars REXROTH |  | 11d | 2018-05-11 | 2018-05-21 |
| 74 | 6.13 | Join the frame bars build structure |  | 21d | 2018-06-01 | 2018-06-21 |
| 75 | 6.14 | Build valve center (drill holes, attach valve, fix in the structure) |  | 21d | 2018-06-01 | 2018-06-21 |
| 76 | 6.15 | Attach the pipes |  | 5d | 2018-06-25 | 2018-06-29 |
| 77 | 6.16 | Build the walls (aluminium sheet, PE FOAM insulation sterofoam) |  | 5d | 2018-07-25 | 2018-07-29 |
| 78 | 6.17 | Make holes in the walls for the external connections |  | 5d | 2018-07-25 | 2018-07-29 |
| 79 | 6.18 | Attach the walls to the structure |  | 5d | 2018-07-25 | 2018-07-29 |

| ID | WBS | Task | Type | Duration | Start | Finish |
| --- | --- | --- | --- | --- | --- | --- |
| 80 | 7 | **Science Division** |  | 365d | 2018-01-16 | 2019-01-15 |
| 81 | 7.1 | Bags vs Canisters decision | milestone | 0d | 2018-02-23 | 2018-02-23 |
| 82 | 7.2 | Understand maths of sampling/test. Flow rate requirements |  | 3d | 2018-02-22 | 2018-02-24 |
| 83 | 7.3 | Similarity with LISA (the paper Lightweight Stratospheric Air Sample) | milestone | 0d | 2018-02-22 | 2018-02-22 |
| 84 | 7.4 | Calculate endothermal analysis (i.e. atmosphere and sun) | milestone | 0d | 2018-02-22 | 2018-02-22 |
| 85 | 7.5 | Obtain empirical model |  | 11d | 2018-03-02 | 2018-03-12 |
| 86 | 7.6 | MATLAB simulation of flight |  | 7d | 2018-03-12 | 2018-03-18 |
| 87 | 7.7 | Model/simulation of sampling |  | 22d | 2018-03-25 | 2018-04-15 |
| 88 | 7.8 | Determing sampling altitudes | milestone | 0d | 2018-05-01 | 2018-05-01 |
| 89 | 7.9 | Understand how chromatographer works |  | 7d | 2018-05-14 | 2018-05-20 |
| 90 | 7.10 | FMI site visit / AirCore tube retrieval |  | 7d | 2018-07-01 | 2018-07-07 |
| 91 | 7.11 | Find out how Piacaro analyser works |  | 4d | 2018-08-30 | 2018-09-02 |
| 92 | 7.12 | Post-flight analysis |  | 28d | 2018-10-22 | 2018-11-18 |
| 93 | 7.13 | Write research paper |  | 58d | 2018-11-19 | 2019-01-15 |
| 94 | 7.14 | Publish research paper |  | 16d | 2018-01-16 | 2018-01-31 |
| 95 | 8 | **Thermal Diviion** |  | 189d | 2018-02-24 | 2018-08-31 |
| 96 | 8.1 | Calculate exothermal analysis |  | 3d | 2018-02-24 | 2018-02-26 |
| 97 | 8.2 | Update thermal design |  | 4d | 2018-03-01 | 2018-03-04 |
| 98 | 8.3 | Onboard new thermal team member |  | 11d | 2018-03-15 | 2018-03-25 |
| 99 | 8.4 | Planned long term thermal tasks | milestone | 0d | 2018-03-30 | 2018-03-30 |
| 100 | 8.5 | Finish calculate Solar Flux and Albedo Flux |  | 6d | 2018-04-06 | 2018-04-11 |
| 101 | 8.6 | Calculate the Earth IR Flux |  | 6d | 2018-04-06 | 2018-04-11 |
| 102 | 8.7 | Calculate Dissipated heat and Convection |  | 8d | 2018-04-12 | 2018-04-19 |
| 103 | 8.8 | Preparations for simulations |  | 8d | 2018-04-12 | 2018-04-19 |
| 104 | 8.9 | Simulate the heat and analyse simulations |  | 11d | 2018-04-20 | 2018-04-30 |
| 105 | 8.10 | Document results from calculations and simulations and define tests |  | 11d | 2018-04-20 | 2018-04-30 |
| 106 | 8.11 | Extra time for simulations and calculations if changes occure from electronics or mechanical |  | 5d | 2018-05-01 | 2018-05-05 |
| 107 | 8.12 | Document thermal analysis for CDR |  | 13d | 2018-05-01 | 2018-05-13 |
| 108 | 8.13 | Check and perfect documentation for CDR |  | 3d | 2018-05-11 | 2018-05-13 |
| 109 | 8.14 | Fix suggestions from CDR, redo simulations and calculations if needed. |  | 30d | 2018-06-01 | 2018-06-30 |
| 110 | 8.15 | Help in building |  | 62d | 2018-07-01 | 2018-08-31 |

| ID | WBS | Task | Duration | Start | Finish |
| --- | --- | --- | --- | --- | --- |
| 111 | 9 | **Exam Periods** | 376d | 2018-01-08 | 2019-01-18 |
| 112 | 9.1 | Exam Period 1 (EX1) | 5d | 2018-01-08 | 2018-01-12 |
| 113 | 9.2 | Exam Period 2 (EX2) | 10d | 2018-03-12 | 2018-03-21 |
| 114 | 9.3 | Exam Period 3 (EX3) | 8d | 2018-05-23 | 2018-05-30 |
| 115 | 9.4 | Exam Period 4 (EX4) | 10d | 2018-08-13 | 2018-08-22 |
| 116 | 9.5 | Exam Period 5 (EX5) | 10d | 2018-10-15 | 2018-10-24 |
| 117 | 9.6 | Exam Period 6 (EX6) | 5d | 2018-12-17 | 2018-12-21 |
| 118 | 9.7 | Exam Period 7 (EX7) | 5d | 2019-01-14 | 2019-01-18 |
| 119 | 10 | **Testing** | 191d | 2018-04-24 | 2018-10-31 |
| 120 | 10.1 | Pump operation test | 1d | 2018-04-24 | 2018-04-24 |
| 121 | 10.2 | Pump low pressure test | 2d | 2018-05-01 | 2018-05-02 |
| 122 | 10.3 | Sampling bag bursting test | 4d | 2018-05-01 | 2018-05-04 |
| 123 | 10.4 | Software and electronics integration testing | 138d | 2018-05-01 | 2018-09-15 |
| 124 | 10.5 | GS-OBC Parameters Reprogram Test | 153d | 2018-05-01 | 2018-09-30 |
| 125 | 10.6 | On-board software unit test | 153d | 2018-05-01 | 2018-09-30 |
| 126 | 10.7 | Pump current in low pressure test | 1d | 2018-05-04 | 2018-05-04 |
| 127 | 10.8 | Data collection test | 30d | 2018-06-01 | 2018-06-30 |
| 128 | 10.9 | Mechanical structural testing | 61d | 2018-06-01 | 2018-07-31 |
| 129 | 10.10 | PCB operations test | 61d | 2018-06-01 | 2018-07-31 |
| 130 | 10.11 | Switching circuit testing and verification | 61d | 2018-06-01 | 2018-07-31 |
| 131 | 10.12 | Low pressure | 31d | 2018-07-01 | 2018-07-31 |
| 132 | 10.13 | Sampling test | 31d | 2018-07-01 | 2018-07-31 |
| 133 | 10.14 | Shock test | 31d | 2018-08-01 | 2018-08-31 |
| 134 | 10.15 | Software operation test | 31d | 2018-08-01 | 2018-08-31 |
| 135 | 10.16 | Thermal test | 61d | 2018-08-01 | 2018-09-30 |
| 136 | 10.17 | Weight verification | 30d | 2018-09-01 | 2018-09-30 |
| 137 | 10.18 | Bench test | 30d | 2018-09-01 | 2018-09-30 |
| 138 | 10.19 | Vibration test | 30d | 2018-09-01 | 2018-09-30 |
| 139 | 10.20 | Experiment removal test | 30d | 2018-09-01 | 2018-09-30 |
| 140 | 10.21 | Samples’ condensation test | 5d | 2018-09-03 | 2018-09-07 |
| 141 | 10.22 | E-Link test | 31d | 2018-10-01 | 2018-10-31 |
